# caAERS-ProjectSchedule-DRAFT-Version2

Schedule from MS Project, 2006-12-01 to 2007-09-26, A marks actual dates.

## Calendars

- Standard: Mon-Fri 08:00-12:00, 13:00-17:00; Sat-Sun off. Exceptions (off unless hours are given): 2006-12-25, 2007-01-01.

## Resources

| Resource |
| --- |
| Warren |
| Cal |
| Renee |
| Rhett |
| Vinay |
| Joshua |
| Padmaja |
| Richard |
| Krikor |
| John |
| Ram |
| Sujith |
| David |
| Brenda |
| Natasha |
| Mayo |
| WF |
| AE_SIG |
| VCDE_WS |
| Arch_WS |
| Edmond |
| Functional Team Lead |
| Dave |
| CCB |

## Schedule

| ID | WBS | Task | Type | Duration | Start | Finish | Predecessors | Complete | Remaining | Baseline start | Baseline finish | Baseline duration | Total slack | Free slack | Constraint | Resources | Work | Actual work | Text1 |
| --- | --- | --- | --- | --- | --- | --- | --- | --- | --- | --- | --- | --- | --- | --- | --- | --- | --- | --- | --- |
| 1 | 1 | **caAERS Application Development Project** |  | 212d | 2006-12-01 A | 2007-09-26 |  | 6% | 199.98d | 2006-12-01 | 2007-09-26 | 212d | 0d |  |  |  | 10144.2h | 2326h |  |
| 2 | 1.1 | **Elaboration Phase** |  | 43d | 2006-12-01 A | 2007-02-01 |  | 14% | 37.01d | 2006-12-01 | 2007-02-01 | 43d | 169d |  |  |  | 10144.2h | 2326h |  |
| 3 | 1.1.1 | **Iteration 1** |  | 22d | 2006-12-01 A | 2007-01-03 |  | 20% | 17.56d | 2006-12-01 | 2007-01-03 | 22d | 190d |  |  |  | 8144.24h | 2326h |  |
| 4 | 1.1.1.1 | **Project Management** |  | 22d | 2006-12-01 A | 2007-01-03 |  | 63% | 8.25d | 2006-12-01 | 2007-01-03 | 22d | 190d |  |  |  | 2760h | 1750h |  |
| 5 | 1.1.1.1.1 | **Inception and Kickoff Planning** |  | 6d | 2006-12-01 A | 2006-12-08 A |  | 100% |  | 2006-12-01 | 2006-12-08 | 6d |  |  |  |  | 200h | 200h |  |
| 6 | 1.1.1.1.1.1 | Draft Project Management Plan |  | 3d | 2006-12-01 A | 2006-12-05 A |  | 100% |  | 2006-12-01 | 2006-12-05 | 3d |  |  |  | Edmond; Ram; Vinay | 72h | 72h |  |
| 7 | 1.1.1.1.1.2 | High-Level Schedule and Assignments |  | 3d | 2006-12-01 A | 2006-12-05 A |  | 100% |  | 2006-12-01 | 2006-12-05 | 3d |  |  |  | Edmond; Ram; Vinay | 72h | 72h | GANTT |
| 8 | 1.1.1.1.1.3 | Kickoff Meeting | milestone | 1d | 2006-12-06 A | 2006-12-06 A |  | 100% |  | 2006-12-06 | 2006-12-06 | 1d |  |  | start no earlier than 2006-12-06 | Edmond; Ram; Vinay; Warren; Renee; Cal | 48h | 48h |  |
| 9 | 1.1.1.1.1.4 | Kickoff Meeting Notes (Task 1.5) |  | 1d | 2006-12-08 A | 2006-12-08 A | 8FS+1d | 100% |  | 2006-12-08 | 2006-12-08 | 1d |  |  |  | Edmond | 8h | 8h | Kickoff Minutes |
| 10 | 1.1.1.1.2 | **Project Management Plan Baseline (Task 1.1)** |  | 11d | 2006-12-11 A | 2006-12-26 |  | 70% | 3.25d | 2006-12-11 | 2006-12-26 | 11d | 195d |  |  |  | 296h | 230h |  |
| 11 | 1.1.1.1.2.1 | Add Details for Elaboration Phase to Project Plan |  | 3d | 2006-12-11 A | 2006-12-13 A | 9 | 100% |  | 2006-12-11 | 2006-12-13 | 3d |  |  |  | Edmond; Ram; Vinay | 72h | 72h |  |
| 12 | 1.1.1.1.2.2 | Resource Load and Level Project Schedule for Elaboration Phase |  | 1d | 2006-12-14 A | 2006-12-14 A | 11 | 100% |  | 2006-12-14 | 2006-12-14 | 1d |  |  |  | Edmond | 8h | 8h |  |
| 13 | 1.1.1.1.2.3 | Adopters/Collaborators Review |  | 5d | 2006-12-15 A | 2006-12-21 | 12 | 75% | 1.25d | 2006-12-15 | 2006-12-21 | 5d | 195d | 0d |  | Mayo; WF; AE_SIG; VCDE_WS; Arch_WS | 200h | 150h |  |
| 14 | 1.1.1.1.2.4 | Updates |  | 2d | 2006-12-22 | 2006-12-26 | 13 |  |  | 2006-12-22 | 2006-12-26 | 2d | 195d | 0d |  | Edmond | 16h |  |  |
| 15 | 1.1.1.1.2.5 | Submit to BAH | milestone | 0d | 2006-12-26 | 2006-12-26 | 14 |  |  | 2006-12-26 | 2006-12-26 | 0d | 195d |  |  | Edmond |  |  |  |
| 16 | 1.1.1.1.3 | **Communications Plan (Task 1.2)** |  | 11d | 2006-12-01 A | 2006-12-15 A |  | 100% |  | 2006-12-01 | 2006-12-15 | 11d |  |  |  |  | 368h | 368h |  |
| 17 | 1.1.1.1.3.1 | Developers Draft |  | 5d | 2006-12-01 A | 2006-12-07 A |  | 100% |  | 2006-12-01 | 2006-12-07 | 5d |  |  |  | Edmond; Ram; Warren; Cal | 160h | 160h |  |
| 18 | 1.1.1.1.3.2 | Adopters/Collaborators Review |  | 5d | 2006-12-08 A | 2006-12-14 A | 17 | 100% |  | 2006-12-08 | 2006-12-14 | 5d |  |  |  | Mayo; WF; AE_SIG; VCDE_WS; Arch_WS | 200h | 200h |  |
| 19 | 1.1.1.1.3.3 | Developers Update |  | 1d | 2006-12-15 A | 2006-12-15 A | 18 | 100% |  | 2006-12-15 | 2006-12-15 | 1d |  |  |  | Edmond | 8h | 8h | Communications Plan |
| 20 | 1.1.1.1.3.4 | Submit to BAH | milestone | 0d | 2006-12-15 A | 2006-12-15 A | 19 | 100% |  | 2006-12-15 | 2006-12-15 | 0d |  |  |  | Edmond |  |  |  |
| 21 | 1.1.1.1.4 | **Adopters Collaboration Plan** |  | 11d | 2006-12-01 A | 2006-12-15 A |  | 100% |  | 2006-12-01 | 2006-12-15 | 11d |  |  |  |  | 368h | 368h | Collaboration Plan |
| 22 | 1.1.1.1.4.1 | Developers Draft |  | 5d | 2006-12-01 A | 2006-12-07 A |  | 100% |  | 2006-12-01 | 2006-12-07 | 5d |  |  |  | Edmond; Ram; Warren; Cal | 160h | 160h |  |
| 23 | 1.1.1.1.4.2 | Adopters/Collaborators Review |  | 5d | 2006-12-08 A | 2006-12-14 A | 22 | 100% |  | 2006-12-08 | 2006-12-14 | 5d |  |  |  | Mayo; WF; AE_SIG; VCDE_WS; Arch_WS | 200h | 200h |  |
| 24 | 1.1.1.1.4.3 | Developers Update |  | 1d | 2006-12-15 A | 2006-12-15 A | 23 | 100% |  | 2006-12-15 | 2006-12-15 | 1d |  |  |  | Edmond | 8h | 8h |  |
| 25 | 1.1.1.1.4.4 | Submit to BAH | milestone | 0d | 2006-12-15 A | 2006-12-15 A | 24 | 100% |  | 2006-12-15 | 2006-12-15 | 0d |  |  |  | Edmond |  |  |  |

| ID | WBS | Task | Type | Duration | Start | Finish | Predecessors | Complete | Remaining | Baseline start | Baseline finish | Baseline duration | Total slack | Free slack | Constraint | Resources | Work | Actual work | Text1 |
| --- | --- | --- | --- | --- | --- | --- | --- | --- | --- | --- | --- | --- | --- | --- | --- | --- | --- | --- | --- |
| 26 | 1.1.1.1.5 | **Risk and Issue Management Plan** |  | 11d | 2006-12-01 A | 2006-12-15 |  | 45% | 6d | 2006-12-01 | 2006-12-15 | 11d | 201d |  |  |  | 248h | 40h | Risk Matrix |
| 27 | 1.1.1.1.5.1 | Developers Draft |  | 5d | 2006-12-01 A | 2006-12-07 A |  | 100% |  | 2006-12-01 | 2006-12-07 | 5d |  |  |  | Edmond | 40h | 40h |  |
| 28 | 1.1.1.1.5.2 | Adopters/Collaborators Review |  | 5d | 2006-12-08 | 2006-12-14 | 27 |  |  | 2006-12-08 | 2006-12-14 | 5d | 201d | 0d |  | Mayo; WF; AE_SIG; VCDE_WS; Arch_WS | 200h |  |  |
| 29 | 1.1.1.1.5.3 | Developers Update |  | 1d | 2006-12-15 | 2006-12-15 | 28 |  |  | 2006-12-15 | 2006-12-15 | 1d | 201d | 0d |  | Edmond | 8h |  |  |
| 30 | 1.1.1.1.5.4 | Submit to BAH | milestone | 0d | 2006-12-15 | 2006-12-15 | 29 |  |  | 2006-12-15 | 2006-12-15 | 0d | 201d |  |  | Edmond |  |  |  |
| 31 | 1.1.1.1.6 | **caAERS Vision and Scope Document (Task 1.8)** |  | 11d | 2006-12-06 A | 2006-12-20 A |  | 100% |  | 2006-12-06 | 2006-12-20 | 11d |  |  |  |  | 400h | 400h | Scope Document |
| 32 | 1.1.1.1.6.1 | Developers Draft |  | 5d | 2006-12-06 A | 2006-12-12 A |  | 100% |  | 2006-12-06 | 2006-12-12 | 5d |  |  | start no earlier than 2006-12-06 | Warren; Cal; Renee; Ram | 160h | 160h |  |
| 33 | 1.1.1.1.6.2 | Adopters/Collaborators Review |  | 5d | 2006-12-13 A | 2006-12-19 A | 32 | 100% |  | 2006-12-13 | 2006-12-19 | 5d |  |  |  | Mayo; WF; AE_SIG; VCDE_WS; Arch_WS | 200h | 200h |  |
| 34 | 1.1.1.1.6.3 | Developers Update |  | 1d | 2006-12-20 A | 2006-12-20 A | 33 | 100% |  | 2006-12-20 | 2006-12-20 | 1d |  |  |  | Warren; Cal; Renee; Ram; Edmond | 40h | 40h |  |
| 35 | 1.1.1.1.6.4 | Submit to BAH | milestone | 0d | 2006-12-20 A | 2006-12-20 A | 34 | 100% |  | 2006-12-20 | 2006-12-20 | 0d |  |  |  | Edmond |  |  |  |
| 36 | 1.1.1.1.7 | **Test and QA Mgmt Plan Document (Task 2.6)** |  | 9d | 2006-12-18 | 2006-12-29 |  |  |  | 2006-12-18 | 2006-12-29 | 9d | 192d |  |  |  | 328h |  |  |
| 37 | 1.1.1.1.7.1 | Developer Draft |  | 3d | 2006-12-18 | 2006-12-20 |  |  |  | 2006-12-18 | 2006-12-20 | 3d | 192d | 0d | start no earlier than 2006-12-18 | Edmond; Vinay; Joshua; Rhett; Natasha | 120h |  |  |
| 38 | 1.1.1.1.7.2 | Adopters/Collobators Review |  | 5d | 2006-12-21 | 2006-12-28 | 37 |  |  | 2006-12-21 | 2006-12-28 | 5d | 192d | 0d |  | Mayo; WF; AE_SIG; VCDE_WS; Arch_WS | 200h |  |  |
| 39 | 1.1.1.1.7.3 | Developer Update |  | 1d | 2006-12-29 | 2006-12-29 | 38 |  |  | 2006-12-29 | 2006-12-29 | 1d | 192d | 0d |  | Edmond | 8h |  |  |
| 40 | 1.1.1.1.7.4 | Submit to BAH | milestone | 0d | 2006-12-29 | 2006-12-29 | 39 |  |  | 2006-12-29 | 2006-12-29 | 0d | 192d |  |  | Edmond |  |  |  |
| 41 | 1.1.1.1.8 | **Change Control Board Plan and Charter (Task 2.10)** |  | 11d | 2006-12-18 | 2007-01-03 |  |  |  | 2006-12-18 | 2007-01-03 | 11d | 190d |  |  |  | 248h |  |  |
| 42 | 1.1.1.1.8.1 | Developer Draft |  | 5d | 2006-12-18 | 2006-12-22 |  |  |  | 2006-12-18 | 2006-12-22 | 5d | 190d | 0d | start no earlier than 2006-12-18 | Edmond | 40h |  |  |
| 43 | 1.1.1.1.8.2 | Adopters/Collobators Review |  | 5d | 2006-12-26 | 2007-01-02 | 42 |  |  | 2006-12-26 | 2007-01-02 | 5d | 190d | 0d |  | Mayo; WF; AE_SIG; VCDE_WS; Arch_WS | 200h |  |  |
| 44 | 1.1.1.1.8.3 | Developer Update |  | 1d | 2007-01-03 | 2007-01-03 | 43 |  |  | 2007-01-03 | 2007-01-03 | 1d | 190d | 0d |  | Edmond | 8h |  |  |
| 45 | 1.1.1.1.8.4 | Submit to BAH | milestone | 0d | 2007-01-03 | 2007-01-03 | 44 |  |  | 2007-01-03 | 2007-01-03 | 0d | 190d |  |  | Edmond |  |  |  |
| 46 | 1.1.1.1.9 | **caAERS F2F (Cross-Cutting WS) Meeting Planning** |  | 13d | 2006-12-01 A | 2006-12-19 |  | 75% | 3.25d | 2006-12-01 | 2006-12-19 | 13d | 199d |  |  |  | 136h | 96h |  |
| 47 | 1.1.1.1.9.1 | Set Date |  | 1d | 2006-12-01 A | 2006-12-01 A |  | 100% |  | 2006-12-01 | 2006-12-01 | 1d |  |  |  | Edmond | 8h | 8h |  |
| 48 | 1.1.1.1.9.2 | Draft Agenda |  | 1d | 2006-12-15 A | 2006-12-15 A | 7 | 100% |  | 2006-12-15 | 2006-12-15 | 1d |  |  | start no earlier than 2006-12-15 | Ram; Vinay; Warren; Cal; Renee; Edmond | 48h | 48h |  |
| 49 | 1.1.1.1.9.3 | Review by Adopters/Collaborators |  | 2d | 2006-12-18 A | 2006-12-19 | 48 | 50% | 1d | 2006-12-18 | 2006-12-19 | 2d | 199d | 0d |  | Mayo; WF; AE_SIG; VCDE_WS; Arch_WS | 80h | 40h |  |
| 50 | 1.1.1.1.9.4 | Finalize F2F Meeting Agenda and Details | milestone | 0d | 2006-12-19 | 2006-12-19 | 49 |  |  | 2006-12-19 | 2006-12-19 | 0d | 199d |  |  | Edmond |  |  |  |

| ID | WBS | Task | Type | Duration | Start | Finish | Predecessors | Complete | Remaining | Baseline start | Baseline finish | Baseline duration | Total slack | Constraint | Resources | Work | Actual work |
| --- | --- | --- | --- | --- | --- | --- | --- | --- | --- | --- | --- | --- | --- | --- | --- | --- | --- |
| 51 | 1.1.1.1.10 | **Weekly Team/Developers Meeting** |  | 11d | 2006-12-11 A | 2006-12-26 |  | 67% | 3.67d | 2006-12-11 | 2006-12-26 | 11d | 195d |  |  | 72h | 48h |
| 52 | 1.1.1.1.10.1 | Weekly Team Meeting 1 |  | 1d | 2006-12-11 A | 2006-12-11 A |  | 100% |  | 2006-12-11 | 2006-12-11 | 1d |  | start no earlier than 2006-12-11 | Edmond; Vinay; Functional Team Lead | 24h | 24h |
| 53 | 1.1.1.1.10.2 | Weekly Team Meeting 2 |  | 1d | 2006-12-18 A | 2006-12-18 A |  | 100% |  | 2006-12-18 | 2006-12-18 | 1d |  | start no earlier than 2006-12-18 | Edmond; Vinay; Functional Team Lead | 24h | 24h |
| 54 | 1.1.1.1.10.3 | Weekly Team Meeting 3 |  | 1d | 2006-12-26 | 2006-12-26 |  |  |  | 2006-12-26 | 2006-12-26 | 1d | 195d | start no earlier than 2006-12-25 | Edmond; Vinay; Functional Team Lead | 24h |  |
| 55 | 1.1.1.1.11 | **Status and Risk Reporting** |  | 10d | 2006-12-15 | 2006-12-29 |  |  |  | 2006-12-15 | 2006-12-29 | 10d | 10d |  |  | 32h |  |
| 56 | 1.1.1.1.11.1 | Bi-weekly Risk Update in caMP (Task 1.4) | milestone | 0d | 2006-12-15 | 2006-12-15 |  |  |  | 2006-12-15 | 2006-12-15 | 0d | 202d | start no earlier than 2006-12-15 | Edmond |  |  |
| 57 | 1.1.1.1.11.2 | Bi-weekly Risk Matrix Update Meeting |  | 1d | 2006-12-22 | 2006-12-22 |  |  |  | 2006-12-22 | 2006-12-22 | 1d | 196d | start no earlier than 2006-12-22 | Edmond; Vinay | 16h |  |
| 58 | 1.1.1.1.11.3 | Bi-weekly Risk Update in caMP (Task 1.4) | milestone | 0d | 2006-12-29 | 2006-12-29 |  |  |  | 2006-12-29 | 2006-12-29 | 0d | 193d | start no earlier than 2006-12-29 | Edmond |  |  |
| 59 | 1.1.1.1.11.4 | Bi-weekly Status Update Meeting with BAH/NCI |  | 1d | 2006-12-29 | 2006-12-29 |  |  |  | 2006-12-29 | 2006-12-29 | 1d | 192d | start no earlier than 2006-12-29 | Edmond; Vinay | 16h |  |
| 60 | 1.1.1.1.11.5 | Monthly Status Report (Task 1.3) | milestone | 0d | 2006-12-29 | 2006-12-29 |  |  |  | 2006-12-29 | 2006-12-29 | 0d | 193d | start no earlier than 2006-12-29 | Edmond |  |  |
| 61 | 1.1.1.1.11.6 | Monthly Risk Matrix Update (Task 1.3) | milestone | 0d | 2006-12-29 | 2006-12-29 |  |  |  | 2006-12-29 | 2006-12-29 | 0d | 0d | must finish on 2006-12-29 |  |  |  |
| 62 | 1.1.1.1.11.7 | Adopters Collaboration Report (Task 1.7) | milestone | 0d | 2006-12-29 | 2006-12-29 |  |  |  | 2006-12-29 | 2006-12-29 | 0d | 193d | start no earlier than 2006-12-29 | Edmond; Warren; Cal; Renee |  |  |
| 63 | 1.1.1.1.12 | **Collaboration Management Activities** |  | 10d | 2006-12-14 | 2006-12-28 |  |  |  | 2006-12-14 | 2006-12-28 | 10d | 193d |  |  | 64h |  |
| 64 | 1.1.1.1.12.1 | Bi-Weekly AE SIG Meeting |  | 1d | 2006-12-14 | 2006-12-14 |  |  |  | 2006-12-14 | 2006-12-14 | 1d | 202d | start no earlier than 2006-12-14 | Edmond; Warren; Cal; Renee | 32h |  |
| 65 | 1.1.1.1.12.2 | Bi-Weekly AE SIG Meeting |  | 1d | 2006-12-28 | 2006-12-28 |  |  |  | 2006-12-28 | 2006-12-28 | 1d | 193d | start no earlier than 2006-12-28 | Edmond; Warren; Cal; Renee | 32h |  |
| 66 | 1.1.1.2 | **Set up Development Environment** |  | 7d | 2006-12-01 A | 2006-12-11 A |  | 100% |  | 2006-12-01 | 2006-12-11 | 7d |  |  |  | 144h | 144h |
| 67 | 1.1.1.2.1 | Set up SCM (Subversion) |  | 2d | 2006-12-01 A | 2006-12-04 A |  | 100% |  | 2006-12-01 | 2006-12-04 | 2d |  |  | Rhett; Vinay | 32h | 32h |
| 68 | 1.1.1.2.2 | Create Build Scripts (using Ant) |  | 3d | 2006-12-05 A | 2006-12-07 A | 67 | 100% |  | 2006-12-05 | 2006-12-07 | 3d |  |  | Rhett | 24h | 24h |
| 69 | 1.1.1.2.3 | Decide on Tech Stack |  | 2d | 2006-12-01 A | 2006-12-04 A |  | 100% |  | 2006-12-01 | 2006-12-04 | 2d |  |  | Rhett; Vinay; Joshua | 48h | 48h |
| 70 | 1.1.1.2.4 | Prepare Development Server |  | 5d | 2006-12-05 A | 2006-12-11 A | 69 | 100% |  | 2006-12-05 | 2006-12-11 | 5d |  |  | Vinay | 40h | 40h |
| 71 | 1.1.1.3 | **Requirements** |  | 20d | 2006-12-01 A | 2006-12-29 |  | 14% | 17.14d | 2006-12-01 | 2006-12-29 | 20d | 192d |  |  | 1392h | 432h |
| 72 | 1.1.1.3.1 | Review Existing R1 Prototype and Requirements |  | 5d | 2006-12-01 A | 2006-12-07 A |  | 100% |  | 2006-12-01 | 2006-12-07 | 5d |  |  | Vinay; Joshua; Rhett; Krikor; Padmaja; Sujith; Renee; David; Brenda; Natasha | 400h | 400h |
| 73 | 1.1.1.3.2 | Select Use Cases |  | 1d | 2006-12-08 A | 2006-12-08 A | 72 | 100% |  | 2006-12-08 | 2006-12-08 | 1d |  |  | Ram; Vinay | 16h | 16h |
| 74 | 1.1.1.3.3 | Assign Use Cases |  | 1d | 2006-12-11 A | 2006-12-11 A | 73 | 100% |  | 2006-12-11 | 2006-12-11 | 1d |  |  | Ram; Vinay | 16h | 16h |

| ID | WBS | Task | Type | Duration | Start | Finish | Predecessors | Baseline start | Baseline finish | Baseline duration | Total slack | Free slack | Resources | Work |
| --- | --- | --- | --- | --- | --- | --- | --- | --- | --- | --- | --- | --- | --- | --- |
| 75 | 1.1.1.3.4 | **Review and Update Use Case Documents (Task 2.1)** |  | 8d | 2006-12-12 | 2006-12-21 | 74 | 2006-12-12 | 2006-12-21 | 8d | 197d | 0d |  | 632h |
| 76 | 1.1.1.3.4.1 | **Create Study/Protocol** |  | 8d | 2006-12-12 | 2006-12-21 |  | 2006-12-12 | 2006-12-21 | 8d | 197d |  |  | 248h |
| 77 | 1.1.1.3.4.1.1 | Developer draft |  | 5d | 2006-12-12 | 2006-12-18 |  | 2006-12-12 | 2006-12-18 | 5d | 197d | 0d | Padmaja; Sujith; Renee; Dave | 160h |
| 78 | 1.1.1.3.4.1.2 | Adopters/Collaborators Review |  | 2d | 2006-12-19 | 2006-12-20 | 77 | 2006-12-19 | 2006-12-20 | 2d | 197d | 0d | Mayo; WF; AE_SIG; VCDE_WS; Arch_WS | 80h |
| 79 | 1.1.1.3.4.1.3 | Developers Update |  | 1d | 2006-12-21 | 2006-12-21 | 78 | 2006-12-21 | 2006-12-21 | 1d | 197d | 0d | John | 8h |
| 80 | 1.1.1.3.4.1.4 | Submit to BAH (Task 2.1) | milestone | 0d | 2006-12-21 | 2006-12-21 | 79 | 2006-12-21 | 2006-12-21 | 0d | 197d |  | Edmond |  |
| 81 | 1.1.1.3.4.2 | **Create Participant** |  | 8d | 2006-12-12 | 2006-12-21 |  | 2006-12-12 | 2006-12-21 | 8d | 197d |  |  | 128h |
| 82 | 1.1.1.3.4.2.1 | Developer draft |  | 5d | 2006-12-12 | 2006-12-18 |  | 2006-12-12 | 2006-12-18 | 5d | 197d | 0d | Krikor | 40h |
| 83 | 1.1.1.3.4.2.2 | Adopters/Collaborators Review |  | 2d | 2006-12-19 | 2006-12-20 | 82 | 2006-12-19 | 2006-12-20 | 2d | 197d | 0d | Mayo; WF; AE_SIG; VCDE_WS; Arch_WS | 80h |
| 84 | 1.1.1.3.4.2.3 | Developers Update |  | 1d | 2006-12-21 | 2006-12-21 | 83 | 2006-12-21 | 2006-12-21 | 1d | 197d | 0d | John | 8h |
| 85 | 1.1.1.3.4.2.4 | Submit to BAH (Task 2.1) | milestone | 0d | 2006-12-21 | 2006-12-21 | 84 | 2006-12-21 | 2006-12-21 | 0d | 197d |  | Edmond |  |
| 86 | 1.1.1.3.4.3 | **Create AE** |  | 8d | 2006-12-12 | 2006-12-21 |  | 2006-12-12 | 2006-12-21 | 8d | 197d |  |  | 128h |
| 87 | 1.1.1.3.4.3.1 | Developer draft |  | 5d | 2006-12-12 | 2006-12-18 |  | 2006-12-12 | 2006-12-18 | 5d | 197d | 0d | Rhett | 40h |
| 88 | 1.1.1.3.4.3.2 | Adopters/Collaborators Review |  | 2d | 2006-12-19 | 2006-12-20 | 87 | 2006-12-19 | 2006-12-20 | 2d | 197d | 0d | Mayo; WF; AE_SIG; VCDE_WS; Arch_WS | 80h |
| 89 | 1.1.1.3.4.3.3 | Developers Update |  | 1d | 2006-12-21 | 2006-12-21 | 88 | 2006-12-21 | 2006-12-21 | 1d | 197d | 0d | John | 8h |
| 90 | 1.1.1.3.4.3.4 | Submit to BAH (Task 2.1) | milestone | 0d | 2006-12-21 | 2006-12-21 | 89 | 2006-12-21 | 2006-12-21 | 0d | 197d |  | Edmond |  |
| 91 | 1.1.1.3.4.4 | **Login** |  | 7d | 2006-12-12 | 2006-12-20 |  | 2006-12-12 | 2006-12-20 | 7d | 198d |  |  | 128h |
| 92 | 1.1.1.3.4.4.1 | Developer draft |  | 5d | 2006-12-12 | 2006-12-18 |  | 2006-12-12 | 2006-12-18 | 5d | 198d | 0d | Padmaja; Sujith | 80h |
| 93 | 1.1.1.3.4.4.2 | Adopters/Collaborators Review |  | 1d | 2006-12-19 | 2006-12-19 | 92 | 2006-12-19 | 2006-12-19 | 1d | 198d | 0d | Mayo; WF; AE_SIG; VCDE_WS; Arch_WS | 40h |
| 94 | 1.1.1.3.4.4.3 | Developers Update |  | 1d | 2006-12-20 | 2006-12-20 | 93 | 2006-12-20 | 2006-12-20 | 1d | 198d | 0d | John | 8h |
| 95 | 1.1.1.3.4.4.4 | Submit to BAH (Task 2.1) | milestone | 0d | 2006-12-20 | 2006-12-20 | 94 | 2006-12-20 | 2006-12-20 | 0d | 198d |  | Edmond |  |
| 96 | 1.1.1.3.5 | **SRS document (Task 2.2)** |  | 11d | 2006-12-14 | 2006-12-29 | 75SS+2d | 2006-12-14 | 2006-12-29 | 11d | 192d |  |  | 328h |
| 97 | 1.1.1.3.5.1 | Developer draft |  | 5d | 2006-12-14 | 2006-12-20 |  | 2006-12-14 | 2006-12-20 | 5d | 192d | 0d | John; Vinay; Rhett | 120h |
| 98 | 1.1.1.3.5.2 | Adopter review |  | 5d | 2006-12-21 | 2006-12-28 | 97 | 2006-12-21 | 2006-12-28 | 5d | 192d | 0d | Mayo; WF; AE_SIG; VCDE_WS; Arch_WS | 200h |
| 99 | 1.1.1.3.5.3 | Developer update |  | 1d | 2006-12-29 | 2006-12-29 | 98 | 2006-12-29 | 2006-12-29 | 1d | 192d | 0d | John | 8h |
| 100 | 1.1.1.3.5.4 | Deliver SRS document to BAH (Task 2.2) | milestone | 0d | 2006-12-29 | 2006-12-29 | 99 | 2006-12-29 | 2006-12-29 | 0d | 192d |  | Edmond |  |

| ID | WBS | Task | Type | Duration | Start | Finish | Predecessors | Baseline start | Baseline finish | Baseline duration | Total slack | Free slack | Resources | Work |
| --- | --- | --- | --- | --- | --- | --- | --- | --- | --- | --- | --- | --- | --- | --- |
| 101 | 1.1.1.4 | **Analysis and Design** |  | 10d | 2006-12-18 | 2007-01-02 | 74SS+5d | 2006-12-18 | 2007-01-02 | 10d | 191d | 0d |  | 1488h |
| 102 | 1.1.1.4.1 | **Design Documents (Task 2.4)** |  | 8d | 2006-12-18 | 2006-12-28 |  | 2006-12-18 | 2006-12-28 | 8d | 193d |  |  | 936h |
| 103 | 1.1.1.4.1.1 | **Create Study/Protocol Design Documents** |  | 8d | 2006-12-18 | 2006-12-28 |  | 2006-12-18 | 2006-12-28 | 8d | 193d |  |  | 256h |
| 104 | 1.1.1.4.1.1.1 | Develop appropriate UML Artifacts |  | 5d | 2006-12-18 | 2006-12-22 |  | 2006-12-18 | 2006-12-22 | 5d | 196d |  | Padmaja; Sujith | 80h |
| 105 | 1.1.1.4.1.1.2 | Developer draft |  | 5d | 2006-12-18 | 2006-12-22 |  | 2006-12-18 | 2006-12-22 | 5d | 193d | 0d | Padmaja; Sujith | 80h |
| 106 | 1.1.1.4.1.1.3 | Adopters/Collaborators Review |  | 2d | 2006-12-26 | 2006-12-27 | 105 | 2006-12-26 | 2006-12-27 | 2d | 193d | 0d | Mayo; WF; AE_SIG; VCDE_WS; Arch_WS | 80h |
| 107 | 1.1.1.4.1.1.4 | Developers Update |  | 1d | 2006-12-28 | 2006-12-28 | 106 | 2006-12-28 | 2006-12-28 | 1d | 193d |  | Padmaja; Sujith | 16h |
| 108 | 1.1.1.4.1.1.5 | Submit to BAH (Task 2.3 and 2.4) | milestone | 0d | 2006-12-28 | 2006-12-28 | 107 | 2006-12-28 | 2006-12-28 | 0d | 193d |  | Edmond |  |
| 109 | 1.1.1.4.1.2 | **Create Participant Design Documents** |  | 8d | 2006-12-18 | 2006-12-28 |  | 2006-12-18 | 2006-12-28 | 8d | 193d |  |  | 168h |
| 110 | 1.1.1.4.1.2.1 | Develop appropriate UML Artifacts |  | 5d | 2006-12-18 | 2006-12-22 |  | 2006-12-18 | 2006-12-22 | 5d | 196d |  | Krikor | 40h |
| 111 | 1.1.1.4.1.2.2 | Developer draft |  | 5d | 2006-12-18 | 2006-12-22 |  | 2006-12-18 | 2006-12-22 | 5d | 193d | 0d | Krikor | 40h |
| 112 | 1.1.1.4.1.2.3 | Adopters/Collaborators Review |  | 2d | 2006-12-26 | 2006-12-27 | 111 | 2006-12-26 | 2006-12-27 | 2d | 193d | 0d | Mayo; WF; AE_SIG; VCDE_WS; Arch_WS | 80h |
| 113 | 1.1.1.4.1.2.4 | Developers Update |  | 1d | 2006-12-28 | 2006-12-28 | 112 | 2006-12-28 | 2006-12-28 | 1d | 193d |  | Krikor | 8h |
| 114 | 1.1.1.4.1.2.5 | Submit to BAH (Task 2.3 and 2.4) | milestone | 0d | 2006-12-28 | 2006-12-28 | 113 | 2006-12-28 | 2006-12-28 | 0d | 193d |  | Edmond |  |
| 115 | 1.1.1.4.1.3 | **Create AE Design Documents** |  | 8d | 2006-12-18 | 2006-12-28 |  | 2006-12-18 | 2006-12-28 | 8d | 193d |  |  | 168h |
| 116 | 1.1.1.4.1.3.1 | Develop appropriate UML Artifacts |  | 5d | 2006-12-18 | 2006-12-22 |  | 2006-12-18 | 2006-12-22 | 5d | 196d |  | Rhett | 40h |
| 117 | 1.1.1.4.1.3.2 | Developer draft |  | 5d | 2006-12-18 | 2006-12-22 |  | 2006-12-18 | 2006-12-22 | 5d | 193d | 0d | Rhett | 40h |
| 118 | 1.1.1.4.1.3.3 | Adopters/Collaborators Review |  | 2d | 2006-12-26 | 2006-12-27 | 117 | 2006-12-26 | 2006-12-27 | 2d | 193d | 0d | Mayo; WF; AE_SIG; VCDE_WS; Arch_WS | 80h |
| 119 | 1.1.1.4.1.3.4 | Developers Update |  | 1d | 2006-12-28 | 2006-12-28 | 118 | 2006-12-28 | 2006-12-28 | 1d | 193d |  | Rhett | 8h |
| 120 | 1.1.1.4.1.3.5 | Submit to BAH (Task 2.3 and 2.4) | milestone | 0d | 2006-12-28 | 2006-12-28 | 119 | 2006-12-28 | 2006-12-28 | 0d | 193d |  | Edmond |  |
| 121 | 1.1.1.4.1.4 | **Login Design Documents** |  | 8d | 2006-12-18 | 2006-12-28 |  | 2006-12-18 | 2006-12-28 | 8d | 193d |  |  | 216h |
| 122 | 1.1.1.4.1.4.1 | Develop appropriate UML Artifacts |  | 5d | 2006-12-18 | 2006-12-22 |  | 2006-12-18 | 2006-12-22 | 5d | 196d |  | Rhett | 40h |
| 123 | 1.1.1.4.1.4.2 | Developer draft |  | 5d | 2006-12-18 | 2006-12-22 |  | 2006-12-18 | 2006-12-22 | 5d | 193d | 0d | Padmaja; Sujith | 80h |
| 124 | 1.1.1.4.1.4.3 | Adopters/Collaborators Review |  | 2d | 2006-12-26 | 2006-12-27 | 123 | 2006-12-26 | 2006-12-27 | 2d | 193d | 0d | Mayo; WF; AE_SIG; VCDE_WS; Arch_WS | 80h |
| 125 | 1.1.1.4.1.4.4 | Developers Update |  | 1d | 2006-12-28 | 2006-12-28 | 124 | 2006-12-28 | 2006-12-28 | 1d | 193d |  | Padmaja; Sujith | 16h |
| 126 | 1.1.1.4.1.4.5 | Submit to BAH (Task 2.3 and 2.4) | milestone | 0d | 2006-12-28 | 2006-12-28 | 125 | 2006-12-28 | 2006-12-28 | 0d | 193d |  | Edmond |  |

| ID | WBS | Task | Type | Duration | Start | Finish | Predecessors | Baseline start | Baseline finish | Baseline duration | Total slack | Free slack | Resources | Work |
| --- | --- | --- | --- | --- | --- | --- | --- | --- | --- | --- | --- | --- | --- | --- |
| 127 | 1.1.1.4.1.5 | **UI/Mockups Design Documents** |  | 8d | 2006-12-18 | 2006-12-28 |  | 2006-12-18 | 2006-12-28 | 8d | 193d |  |  | 128h |
| 128 | 1.1.1.4.1.5.1 | Developer Draft |  | 5d | 2006-12-18 | 2006-12-22 |  | 2006-12-18 | 2006-12-22 | 5d | 193d | 0d | Richard | 40h |
| 129 | 1.1.1.4.1.5.2 | Adopters/Collaborators Review |  | 2d | 2006-12-26 | 2006-12-27 | 128 | 2006-12-26 | 2006-12-27 | 2d | 193d | 0d | Mayo; WF; AE_SIG; VCDE_WS; Arch_WS | 80h |
| 130 | 1.1.1.4.1.5.3 | Developers Update |  | 1d | 2006-12-28 | 2006-12-28 | 129 | 2006-12-28 | 2006-12-28 | 1d | 193d |  | Richard | 8h |
| 131 | 1.1.1.4.1.5.4 | Submit to BAH (Task 2.4) | milestone | 0d | 2006-12-28 | 2006-12-28 | 130 | 2006-12-28 | 2006-12-28 | 0d | 193d |  | Edmond |  |
| 132 | 1.1.1.4.2 | **ESB** |  | 7d | 2006-12-18 | 2006-12-27 |  | 2006-12-18 | 2006-12-27 | 7d | 194d |  |  | 112h |
| 133 | 1.1.1.4.2.1 | Evalutate technologies by prototyping |  | 7d | 2006-12-18 | 2006-12-27 |  | 2006-12-18 | 2006-12-27 | 7d | 194d |  | Vinay; Joshua | 112h |
| 134 | 1.1.1.4.3 | **Grid service** |  | 7d | 2006-12-18 | 2006-12-27 |  | 2006-12-18 | 2006-12-27 | 7d | 194d |  |  | 112h |
| 135 | 1.1.1.4.3.1 | Evaluate caGrid 1.0 service infrastructure |  | 7d | 2006-12-18 | 2006-12-27 |  | 2006-12-18 | 2006-12-27 | 7d | 194d |  | Vinay; Joshua | 112h |
| 136 | 1.1.1.4.4 | **Database** |  | 3d | 2006-12-18 | 2006-12-20 |  | 2006-12-18 | 2006-12-20 | 3d | 198d |  |  | 96h |
| 137 | 1.1.1.4.4.1 | First draft of database structure |  | 3d | 2006-12-18 | 2006-12-20 |  | 2006-12-18 | 2006-12-20 | 3d | 198d |  | Rhett; Padmaja; Sujith; Krikor | 96h |
| 138 | 1.1.1.4.5 | **Domain model** |  | 9d | 2006-12-18 | 2006-12-29 |  | 2006-12-18 | 2006-12-29 | 9d | 192d |  |  | 72h |
| 139 | 1.1.1.4.5.1 | Create model harmonized with BRIDG |  | 5d | 2006-12-18 | 2006-12-22 |  | 2006-12-18 | 2006-12-22 | 5d | 192d | 0d | John | 40h |
| 140 | 1.1.1.4.5.2 | Create first draft of model |  | 4d | 2006-12-26 | 2006-12-29 | 139 | 2006-12-26 | 2006-12-29 | 4d | 192d |  | John | 32h |
| 141 | 1.1.1.4.6 | **Security** |  | 10d | 2006-12-18 | 2007-01-02 |  | 2006-12-18 | 2007-01-02 | 10d | 191d |  |  | 160h |
| 142 | 1.1.1.4.6.1 | Evaluate caGrid 1.0 security infrastructure |  | 10d | 2006-12-18 | 2007-01-02 | 74 | 2006-12-18 | 2007-01-02 | 10d | 191d |  | Vinay; Joshua | 160h |
| 143 | 1.1.1.5 | **Implementation** |  | 5d | 2006-12-19 | 2006-12-26 | 101SS+1d | 2006-12-19 | 2006-12-26 | 5d | 2d | 0d |  | 1280h |
| 144 | 1.1.1.5.1 | **Enterprise Service Bus** |  | 5d | 2006-12-19 | 2006-12-26 |  | 2006-12-19 | 2006-12-26 | 5d | 2d |  |  | 80h |
| 145 | 1.1.1.5.1.1 | Setup initial project |  | 5d | 2006-12-19 | 2006-12-26 |  | 2006-12-19 | 2006-12-26 | 5d | 2d |  | Vinay; Joshua | 80h |
| 146 | 1.1.1.5.2 | **Grid service** |  | 5d | 2006-12-19 | 2006-12-26 |  | 2006-12-19 | 2006-12-26 | 5d | 2d |  |  | 80h |
| 147 | 1.1.1.5.2.1 | Create grid service skeleton |  | 5d | 2006-12-19 | 2006-12-26 |  | 2006-12-19 | 2006-12-26 | 5d | 2d |  | Vinay; Joshua | 80h |
| 148 | 1.1.1.5.3 | **Create Study/Protocol** |  | 5d | 2006-12-19 | 2006-12-26 |  | 2006-12-19 | 2006-12-26 | 5d | 2d |  |  | 640h |
| 149 | 1.1.1.5.3.1 | Implement O/R mapping |  | 5d | 2006-12-19 | 2006-12-26 |  | 2006-12-19 | 2006-12-26 | 5d | 2d |  | Padmaja; Sujith | 80h |
| 150 | 1.1.1.5.3.2 | Develop StudyDAO |  | 5d | 2006-12-19 | 2006-12-26 |  | 2006-12-19 | 2006-12-26 | 5d | 2d |  | Padmaja; Sujith | 80h |
| 151 | 1.1.1.5.3.3 | Develop StudyService |  | 5d | 2006-12-19 | 2006-12-26 |  | 2006-12-19 | 2006-12-26 | 5d | 2d |  | Padmaja; Sujith | 80h |
| 152 | 1.1.1.5.3.4 | Develop controller and command objects |  | 5d | 2006-12-19 | 2006-12-26 |  | 2006-12-19 | 2006-12-26 | 5d | 2d |  | Padmaja; Sujith | 80h |
| 153 | 1.1.1.5.3.5 | Develop UI |  | 5d | 2006-12-19 | 2006-12-26 |  | 2006-12-19 | 2006-12-26 | 5d | 2d |  | Padmaja; Sujith | 80h |
| 154 | 1.1.1.5.3.6 | Develop JUnit test cases |  | 5d | 2006-12-19 | 2006-12-26 |  | 2006-12-19 | 2006-12-26 | 5d | 2d |  | Padmaja; Sujith | 80h |
| 155 | 1.1.1.5.3.7 | Develop |  | 5d | 2006-12-19 | 2006-12-26 |  | 2006-12-19 | 2006-12-26 | 5d | 2d |  | Padmaja; Sujith | 80h |
| 156 | 1.1.1.5.3.8 | Login |  | 5d | 2006-12-19 | 2006-12-26 |  | 2006-12-19 | 2006-12-26 | 5d | 2d |  | Padmaja; Sujith | 80h |

| ID | WBS | Task | Type | Duration | Start | Finish | Predecessors | Baseline start | Baseline finish | Baseline duration | Total slack | Free slack | Resources | Work |
| --- | --- | --- | --- | --- | --- | --- | --- | --- | --- | --- | --- | --- | --- | --- |
| 157 | 1.1.1.5.4 | **Create Participant** |  | 5d | 2006-12-19 | 2006-12-26 |  | 2006-12-19 | 2006-12-26 | 5d | 2d |  |  | 240h |
| 158 | 1.1.1.5.4.1 | Implement O/R mapping |  | 5d | 2006-12-19 | 2006-12-26 |  | 2006-12-19 | 2006-12-26 | 5d | 2d |  | Krikor | 40h |
| 159 | 1.1.1.5.4.2 | Develop ParticipantDAO |  | 5d | 2006-12-19 | 2006-12-26 |  | 2006-12-19 | 2006-12-26 | 5d | 2d |  | Krikor | 40h |
| 160 | 1.1.1.5.4.3 | Develop ParticipantService |  | 5d | 2006-12-19 | 2006-12-26 |  | 2006-12-19 | 2006-12-26 | 5d | 2d |  | Krikor | 40h |
| 161 | 1.1.1.5.4.4 | Develop controller and command objects |  | 5d | 2006-12-19 | 2006-12-26 |  | 2006-12-19 | 2006-12-26 | 5d | 2d |  | Krikor | 40h |
| 162 | 1.1.1.5.4.5 | Develop UI |  | 5d | 2006-12-19 | 2006-12-26 |  | 2006-12-19 | 2006-12-26 | 5d | 2d |  | Krikor | 40h |
| 163 | 1.1.1.5.4.6 | Develop JUnit test cases |  | 5d | 2006-12-19 | 2006-12-26 |  | 2006-12-19 | 2006-12-26 | 5d | 2d |  | Krikor | 40h |
| 164 | 1.1.1.5.5 | **Create AE** |  | 5d | 2006-12-19 | 2006-12-26 |  | 2006-12-19 | 2006-12-26 | 5d | 2d |  |  | 240h |
| 165 | 1.1.1.5.5.1 | Implement O/R mapping |  | 5d | 2006-12-19 | 2006-12-26 |  | 2006-12-19 | 2006-12-26 | 5d | 2d |  | Rhett | 40h |
| 166 | 1.1.1.5.5.2 | Develop AdverseEventDAO |  | 5d | 2006-12-19 | 2006-12-26 |  | 2006-12-19 | 2006-12-26 | 5d | 2d |  | Rhett | 40h |
| 167 | 1.1.1.5.5.3 | Develop AdverseEventService |  | 5d | 2006-12-19 | 2006-12-26 |  | 2006-12-19 | 2006-12-26 | 5d | 2d |  | Rhett | 40h |
| 168 | 1.1.1.5.5.4 | Develop controller and command objects |  | 5d | 2006-12-19 | 2006-12-26 |  | 2006-12-19 | 2006-12-26 | 5d | 2d |  | Rhett | 40h |
| 169 | 1.1.1.5.5.5 | Develop UI |  | 5d | 2006-12-19 | 2006-12-26 |  | 2006-12-19 | 2006-12-26 | 5d | 2d |  | Rhett | 40h |
| 170 | 1.1.1.5.5.6 | Develop JUnit test cases |  | 5d | 2006-12-19 | 2006-12-26 |  | 2006-12-19 | 2006-12-26 | 5d | 2d |  | Rhett | 40h |
| 171 | 1.1.1.6 | **Testing** |  | 8d | 2006-12-19 | 2006-12-29 |  | 2006-12-19 | 2006-12-29 | 8d | 7d |  |  | 1080.24h |
| 172 | 1.1.1.6.1 | **Create Functional Tests** |  | 6d | 2006-12-19 | 2006-12-27 | 75SS+5d | 2006-12-19 | 2006-12-27 | 6d | 194d |  |  | 968.24h |
| 173 | 1.1.1.6.1.1 | Create Study |  | 5d | 2006-12-19 | 2006-12-26 |  | 2006-12-19 | 2006-12-26 | 5d | 195d |  | Renee; David; Brenda; Natasha; Mayo; WF | 240.24h |
| 174 | 1.1.1.6.1.2 | Create Participant |  | 5d | 2006-12-19 | 2006-12-26 |  | 2006-12-19 | 2006-12-26 | 5d | 195d |  | Renee; David; Brenda; Natasha; Mayo; WF | 240h |
| 175 | 1.1.1.6.1.3 | Login |  | 5d | 2006-12-19 | 2006-12-26 |  | 2006-12-19 | 2006-12-26 | 5d | 195d |  | Renee; David; Brenda; Natasha; Mayo; WF | 240h |
| 176 | 1.1.1.6.1.4 | Create AE |  | 5d | 2006-12-19 | 2006-12-26 |  | 2006-12-19 | 2006-12-26 | 5d | 194d | 0d | Renee; David; Brenda; Natasha; Mayo; WF | 240h |
| 177 | 1.1.1.6.1.5 | RTM |  | 1d | 2006-12-27 | 2006-12-27 | 176, 97 | 2006-12-27 | 2006-12-27 | 1d | 194d |  | John | 8h |
| 178 | 1.1.1.6.2 | **Final Tests of Iteration** |  | 3d | 2006-12-27 | 2006-12-29 |  | 2006-12-27 | 2006-12-29 | 3d | 2d |  |  | 112h |
| 179 | 1.1.1.6.2.1 | Deploy Prototype (Task 2.5) |  | 1d | 2006-12-27 | 2006-12-27 | 143 | 2006-12-27 | 2006-12-27 | 1d | 2d | 0d | Joshua; Rhett | 16h |
| 180 | 1.1.1.6.2.2 | Validation and Acceptance Testing |  | 2d | 2006-12-28 | 2006-12-29 | 179 | 2006-12-28 | 2006-12-29 | 2d | 2d | 0d | Renee; David; Brenda; Natasha; Mayo; WF | 96h |
| 181 | 1.1.1.6.2.3 | Submit Test Results Report (Task 2.7) | milestone | 0d | 2006-12-29 | 2006-12-29 | 180 | 2006-12-29 | 2006-12-29 | 0d | 2d | 0d |  |  |

| ID | WBS | Task | Type | Duration | Start | Finish | Predecessors | Baseline start | Baseline finish | Baseline duration | Total slack | Free slack | Constraint | Resources | Work |
| --- | --- | --- | --- | --- | --- | --- | --- | --- | --- | --- | --- | --- | --- | --- | --- |
| 182 | 1.1.2 | **Iteration 2** |  | 23d | 2007-01-02 | 2007-02-01 | 181 | 2007-01-02 | 2007-02-01 | 23d | 2d |  | start no earlier than 2007-01-01 |  | 2000h |
| 183 | 1.1.2.1 | **Project Management** |  | 23d | 2007-01-02 | 2007-02-01 |  | 2007-01-02 | 2007-02-01 | 23d | 169d |  |  |  | 704h |
| 184 | 1.1.2.1.1 | Update Project Plan |  | 5d | 2007-01-02 | 2007-01-08 |  | 2007-01-02 | 2007-01-08 | 5d | 187d |  |  | Edmond | 40h |
| 185 | 1.1.2.1.2 | Update Test Plan Document (Task 2.6) |  | 5d | 2007-01-08 | 2007-01-12 |  | 2007-01-08 | 2007-01-12 | 5d | 183d |  | start no earlier than 2007-01-08 | Edmond; Vinay; Natasha | 120h |
| 186 | 1.1.2.1.3 | **Detailed Construction and Transition Plan** |  | 9d | 2007-01-22 | 2007-02-01 |  | 2007-01-22 | 2007-02-01 | 9d | 169d |  |  |  | 328h |
| 187 | 1.1.2.1.3.1 | Update Construction and Transition Phases |  | 5d | 2007-01-22 | 2007-01-26 |  | 2007-01-22 | 2007-01-26 | 5d | 169d | 0d | start no earlier than 2007-01-22 | Edmond; Ram; Vinay; Warren; Cal | 200h |
| 188 | 1.1.2.1.3.2 | Adopter review |  | 3d | 2007-01-29 | 2007-01-31 | 187 | 2007-01-29 | 2007-01-31 | 3d | 169d | 0d |  | Mayo; WF; AE_SIG; VCDE_WS; Arch_WS | 120h |
| 189 | 1.1.2.1.3.3 | Revisions |  | 1d | 2007-02-01 | 2007-02-01 | 188 | 2007-02-01 | 2007-02-01 | 1d | 169d | 0d |  | Edmond | 8h |
| 190 | 1.1.2.1.3.4 | Deliver Design document to BAH (Task 2.9) | milestone | 0d | 2007-02-01 | 2007-02-01 | 189 | 2007-02-01 | 2007-02-01 | 0d | 169d |  |  | Edmond |  |
| 191 | 1.1.2.1.4 | **CaAERS CCB (Task 2.10)** |  | 11d | 2007-01-10 | 2007-01-24 |  | 2007-01-10 | 2007-01-24 | 11d | 175d |  |  |  | 48h |
| 192 | 1.1.2.1.4.1 | CCB Meetings |  | 1d | 2007-01-10 | 2007-01-10 |  | 2007-01-10 | 2007-01-10 | 1d | 185d |  | start no earlier than 2007-01-10 | Edmond; Vinay; CCB | 24h |
| 193 | 1.1.2.1.4.2 | CCB Meetings |  | 1d | 2007-01-24 | 2007-01-24 |  | 2007-01-24 | 2007-01-24 | 1d | 175d |  | start no earlier than 2007-01-24 | Edmond; Vinay; CCB | 24h |
| 194 | 1.1.2.1.5 | **Weekly Team/Developers Meeting** |  | 16d | 2007-01-08 | 2007-01-29 |  | 2007-01-08 | 2007-01-29 | 16d | 172d |  |  |  | 96h |
| 195 | 1.1.2.1.5.1 | Weekly Team Meeting 1 |  | 1d | 2007-01-08 | 2007-01-08 |  | 2007-01-08 | 2007-01-08 | 1d | 187d |  | start no earlier than 2007-01-08 | Edmond; Vinay; Functional Team Lead | 24h |
| 196 | 1.1.2.1.5.2 | Weekly Team Meeting 2 |  | 1d | 2007-01-15 | 2007-01-15 |  | 2007-01-15 | 2007-01-15 | 1d | 182d |  | start no earlier than 2007-01-15 | Edmond; Vinay; Functional Team Lead | 24h |
| 197 | 1.1.2.1.5.3 | Weekly Team Meeting 3 |  | 1d | 2007-01-22 | 2007-01-22 |  | 2007-01-22 | 2007-01-22 | 1d | 177d |  | start no earlier than 2007-01-22 | Edmond; Vinay; Functional Team Lead | 24h |
| 198 | 1.1.2.1.5.4 | Weekly Team Meeting 4 |  | 1d | 2007-01-29 | 2007-01-29 |  | 2007-01-29 | 2007-01-29 | 1d | 172d |  | start no earlier than 2007-01-29 | Edmond; Vinay; Functional Team Lead | 24h |
| 199 | 1.1.2.1.6 | **Status and Risk Reporting** |  | 14d | 2007-01-12 | 2007-01-31 |  | 2007-01-12 | 2007-01-31 | 14d | 170d |  |  |  | 72h |
| 200 | 1.1.2.1.6.1 | Bi-weekly Risk Update in caMP (Task 1.4) |  | 1d | 2007-01-12 | 2007-01-12 |  | 2007-01-12 | 2007-01-12 | 1d | 183d |  | start no earlier than 2007-01-12 | Edmond | 8h |
| 201 | 1.1.2.1.6.2 | Bi-weekly Risk Matrix Update Meeting |  | 1d | 2007-01-12 | 2007-01-12 |  | 2007-01-12 | 2007-01-12 | 1d | 183d |  | start no earlier than 2007-01-12 | Edmond | 8h |
| 202 | 1.1.2.1.6.3 | Bi-weekly Risk Update in caMP (Task 1.4) |  | 1d | 2007-01-26 | 2007-01-26 |  | 2007-01-26 | 2007-01-26 | 1d | 173d |  | start no earlier than 2007-01-26 | Edmond | 8h |
| 203 | 1.1.2.1.6.4 | Bi-weekly Status Update Meeting with BAH/NCI |  | 1d | 2007-01-26 | 2007-01-26 |  | 2007-01-26 | 2007-01-26 | 1d | 173d |  | start no earlier than 2007-01-26 | Edmond; Ram; Vinay | 24h |
| 204 | 1.1.2.1.6.5 | Monthly Status Report (Task 1.3) |  | 1d | 2007-01-31 | 2007-01-31 |  | 2007-01-31 | 2007-01-31 | 1d | 170d |  | start no earlier than 2007-01-31 | Edmond | 8h |
| 205 | 1.1.2.1.6.6 | Monthly Risk Matrix Update (Task 1.3) |  | 1d | 2007-01-31 | 2007-01-31 |  | 2007-01-31 | 2007-01-31 | 1d | 170d |  | start no earlier than 2007-01-31 | Edmond | 8h |
| 206 | 1.1.2.1.6.7 | Adopters Collaboration Report (Task 1.7) |  | 1d | 2007-01-31 | 2007-01-31 |  | 2007-01-31 | 2007-01-31 | 1d | 170d |  | start no earlier than 2007-01-31 | Edmond | 8h |

| ID | WBS | Task | Type | Duration | Start | Finish | Predecessors | Baseline start | Baseline finish | Baseline duration | Total slack | Free slack | Constraint | Resources | Work |
| --- | --- | --- | --- | --- | --- | --- | --- | --- | --- | --- | --- | --- | --- | --- | --- |
| 207 | 1.1.2.1.7 | **Collaboration Management Activities** |  | 11d | 2007-01-11 | 2007-01-25 |  | 2007-01-11 | 2007-01-25 | 11d | 174d |  |  |  |  |
| 208 | 1.1.2.1.7.1 | Bi-Weekly AE SIG Meeting |  | 1d | 2007-01-11 | 2007-01-11 |  | 2007-01-11 | 2007-01-11 | 1d | 184d |  | start no earlier than 2007-01-11 |  |  |
| 209 | 1.1.2.1.7.2 | Bi-Weekly AE SIG Meeting |  | 1d | 2007-01-25 | 2007-01-25 |  | 2007-01-25 | 2007-01-25 | 1d | 174d |  | start no earlier than 2007-01-25 |  |  |
| 210 | 1.1.2.2 | **Requirements** |  | 16d | 2007-01-02 | 2007-01-23 |  | 2007-01-02 | 2007-01-23 | 16d | 2d |  |  |  | 320h |
| 211 | 1.1.2.2.1 | Face-to-Face Meeting |  | 2d | 2007-01-04 | 2007-01-05 |  | 2007-01-04 | 2007-01-05 | 2d | 0d |  | must start on 2007-01-04 | Ram; Vinay; Warren; Cal; Renee; David; John; Rhett; Joshua | 144h |
| 212 | 1.1.2.2.2 | F2F Meeting Notes (Task 1.5) |  | 2d | 2007-01-08 | 2007-01-09 | 211 | 2007-01-08 | 2007-01-09 | 2d | 186d |  |  | Edmond | 16h |
| 213 | 1.1.2.2.3 | Use Case Selection |  | 2d | 2007-01-02 | 2007-01-03 |  | 2007-01-02 | 2007-01-03 | 2d | 183d | 0d |  | Ram; Vinay; Warren; Cal | 64h |
| 214 | 1.1.2.2.4 | Use Case Assignments for Iteration 2 |  | 1d | 2007-01-04 | 2007-01-04 | 213 | 2007-01-04 | 2007-01-04 | 1d | 183d | 0d |  | Vinay | 8h |
| 215 | 1.1.2.2.5 | **Use Case Specification and Realization (Task 2.1)** |  | 6d | 2007-01-05 | 2007-01-12 |  | 2007-01-05 | 2007-01-12 | 6d | 183d | 0d |  |  |  |
| 216 | 1.1.2.2.5.1 | Developer draft |  | 3d | 2007-01-05 | 2007-01-09 | 214 | 2007-01-05 | 2007-01-09 | 3d | 183d | 0d |  |  |  |
| 217 | 1.1.2.2.5.2 | Adopter review |  | 2d | 2007-01-10 | 2007-01-11 | 216 | 2007-01-10 | 2007-01-11 | 2d | 183d | 0d |  |  |  |
| 218 | 1.1.2.2.5.3 | Developer update |  | 1d | 2007-01-12 | 2007-01-12 | 217 | 2007-01-12 | 2007-01-12 | 1d | 183d | 0d |  |  |  |
| 219 | 1.1.2.2.5.4 | Deliver to BAH (Task 2.1) | milestone | 0d | 2007-01-12 | 2007-01-12 | 218 | 2007-01-12 | 2007-01-12 | 0d | 183d |  |  |  |  |
| 220 | 1.1.2.2.6 | **SRS document (Task 2.2)** |  | 11d | 2007-01-09 | 2007-01-23 | 215SS+2d | 2007-01-09 | 2007-01-23 | 11d | 175d | 0d |  |  | 88h |
| 221 | 1.1.2.2.6.1 | Developer draft |  | 5d | 2007-01-09 | 2007-01-15 |  | 2007-01-09 | 2007-01-15 | 5d | 175d | 0d |  | John | 40h |
| 222 | 1.1.2.2.6.2 | Adopter review |  | 5d | 2007-01-16 | 2007-01-22 | 221 | 2007-01-16 | 2007-01-22 | 5d | 175d | 0d |  | John | 40h |
| 223 | 1.1.2.2.6.3 | Developer update |  | 1d | 2007-01-23 | 2007-01-23 | 222 | 2007-01-23 | 2007-01-23 | 1d | 175d | 0d |  | John | 8h |
| 224 | 1.1.2.2.6.4 | Deliver SRS document to BAH (Task 2.2) | milestone | 0d | 2007-01-23 | 2007-01-23 | 223 | 2007-01-23 | 2007-01-23 | 0d | 175d |  |  | John |  |
| 225 | 1.1.2.3 | **Analysis and Design** |  | 11d | 2007-01-12 | 2007-01-26 |  | 2007-01-12 | 2007-01-26 | 11d | 173d |  |  |  | 296h |
| 226 | 1.1.2.3.1 | **Design Documents** |  | 8d | 2007-01-12 | 2007-01-23 | 215SS+5d | 2007-01-12 | 2007-01-23 | 8d | 176d |  |  |  |  |
| 227 | 1.1.2.3.1.1 | Developer draft |  | 5d | 2007-01-12 | 2007-01-18 |  | 2007-01-12 | 2007-01-18 | 5d | 176d | 0d |  |  |  |
| 228 | 1.1.2.3.1.2 | Adopter review |  | 2d | 2007-01-19 | 2007-01-22 | 227 | 2007-01-19 | 2007-01-22 | 2d | 176d | 0d |  |  |  |
| 229 | 1.1.2.3.1.3 | Developer update |  | 1d | 2007-01-23 | 2007-01-23 | 228 | 2007-01-23 | 2007-01-23 | 1d | 176d | 0d |  |  |  |
| 230 | 1.1.2.3.1.4 | Deliver Design document to BAH (Task 2.2) | milestone | 0d | 2007-01-23 | 2007-01-23 | 229 | 2007-01-23 | 2007-01-23 | 0d | 176d |  |  |  |  |

| ID | WBS | Task | Type | Duration | Start | Finish | Predecessors | Baseline start | Baseline finish | Baseline duration | Total slack | Free slack | Resources | Work |
| --- | --- | --- | --- | --- | --- | --- | --- | --- | --- | --- | --- | --- | --- | --- |
| 231 | 1.1.2.3.2 | **UML Diagrams (Task 2.3)** |  | 8d | 2007-01-12 | 2007-01-23 |  | 2007-01-12 | 2007-01-23 | 8d | 176d |  |  |  |
| 232 | 1.1.2.3.2.1 | Developer draft |  | 5d | 2007-01-12 | 2007-01-18 | 215SS+5d | 2007-01-12 | 2007-01-18 | 5d | 176d | 0d |  |  |
| 233 | 1.1.2.3.2.2 | Adopter review |  | 2d | 2007-01-19 | 2007-01-22 | 232 | 2007-01-19 | 2007-01-22 | 2d | 176d | 0d |  |  |
| 234 | 1.1.2.3.2.3 | Developer update |  | 1d | 2007-01-23 | 2007-01-23 | 233 | 2007-01-23 | 2007-01-23 | 1d | 176d | 0d |  |  |
| 235 | 1.1.2.3.2.4 | Deliver to BAH (Task 2.3) | milestone | 0d | 2007-01-23 | 2007-01-23 | 234 | 2007-01-23 | 2007-01-23 | 0d | 176d |  |  |  |
| 236 | 1.1.2.3.3 | **Technical/Architecture Guide** |  | 11d | 2007-01-12 | 2007-01-26 |  | 2007-01-12 | 2007-01-26 | 11d | 173d |  |  | 296h |
| 237 | 1.1.2.3.3.1 | Developer draft |  | 5d | 2007-01-12 | 2007-01-18 | 215SS+5d | 2007-01-12 | 2007-01-18 | 5d | 173d | 0d | Vinay; Joshua | 80h |
| 238 | 1.1.2.3.3.2 | Adopter review |  | 5d | 2007-01-19 | 2007-01-25 | 237 | 2007-01-19 | 2007-01-25 | 5d | 173d | 0d | Mayo; WF; AE_SIG; VCDE_WS; Arch_WS | 200h |
| 239 | 1.1.2.3.3.3 | Developer update |  | 1d | 2007-01-26 | 2007-01-26 | 238 | 2007-01-26 | 2007-01-26 | 1d | 173d | 0d | Vinay; Joshua | 16h |
| 240 | 1.1.2.3.3.4 | Deliver to BAH (Task 2.8) | milestone | 0d | 2007-01-26 | 2007-01-26 | 239 | 2007-01-26 | 2007-01-26 | 0d | 173d |  | Edmond |  |
| 241 | 1.1.2.4 | **Implementation** |  | 13d | 2007-01-08 | 2007-01-24 | 215SS+1d | 2007-01-08 | 2007-01-24 | 13d | 173d | 0d |  | 448h |
| 242 | 1.1.2.4.1 | **Web interface** |  | 10d | 2007-01-08 | 2007-01-19 |  | 2007-01-08 | 2007-01-19 | 10d | 176d |  |  | 80h |
| 243 | 1.1.2.4.1.1 | Second web interface iteration |  | 10d | 2007-01-08 | 2007-01-19 |  | 2007-01-08 | 2007-01-19 | 10d | 176d |  | Richard | 80h |
| 244 | 1.1.2.4.2 | **Enterprise Service Bus** |  | 10d | 2007-01-08 | 2007-01-19 |  | 2007-01-08 | 2007-01-19 | 10d | 176d |  |  | 160h |
| 245 | 1.1.2.4.2.1 | Second ESB Iteration |  | 10d | 2007-01-08 | 2007-01-19 |  | 2007-01-08 | 2007-01-19 | 10d | 176d |  | Vinay; Joshua | 160h |
| 246 | 1.1.2.4.3 | **Grid service** |  | 13d | 2007-01-08 | 2007-01-24 |  | 2007-01-08 | 2007-01-24 | 13d | 173d |  |  | 208h |
| 247 | 1.1.2.4.3.1 | Implement Grid Service |  | 13d | 2007-01-08 | 2007-01-24 |  | 2007-01-08 | 2007-01-24 | 13d | 173d |  | Vinay; Joshua | 208h |
| 248 | 1.1.2.4.4 | **Implement Use Cases** |  | 12d | 2007-01-08 | 2007-01-23 |  | 2007-01-08 | 2007-01-23 | 12d | 174d |  |  |  |
| 249 | 1.1.2.4.4.1 | Implement O/R mapping |  | 10d | 2007-01-08 | 2007-01-19 |  | 2007-01-08 | 2007-01-19 | 10d | 174d | 0d |  |  |
| 250 | 1.1.2.4.4.2 | Develop DAO |  | 10d | 2007-01-10 | 2007-01-23 | 249SS+2d | 2007-01-10 | 2007-01-23 | 10d | 174d |  |  |  |
| 251 | 1.1.2.4.4.3 | Develop Service |  | 10d | 2007-01-10 | 2007-01-23 | 249SS+2d | 2007-01-10 | 2007-01-23 | 10d | 174d |  |  |  |
| 252 | 1.1.2.4.4.4 | Develop controller and command objects |  | 10d | 2007-01-10 | 2007-01-23 | 249SS+2d | 2007-01-10 | 2007-01-23 | 10d | 174d |  |  |  |
| 253 | 1.1.2.4.4.5 | Develop JUnit test cases |  | 7d | 2007-01-10 | 2007-01-18 | 249SS+2d | 2007-01-10 | 2007-01-18 | 7d | 177d |  |  |  |
| 254 | 1.1.2.5 | **Testing** |  | 11d | 2007-01-12 | 2007-01-26 |  | 2007-01-12 | 2007-01-26 | 11d | 173d |  |  | 232h |
| 255 | 1.1.2.5.1 | **Create Functional Tests** |  | 9d | 2007-01-12 | 2007-01-24 | 215SS+5d | 2007-01-12 | 2007-01-24 | 9d | 175d |  |  | 168h |
| 256 | 1.1.2.5.1.1 | Create Functional Tests for Use Cases |  | 5d | 2007-01-12 | 2007-01-18 |  | 2007-01-12 | 2007-01-18 | 5d | 178d | 3d | Renee; David; Brenda; Natasha | 160h |
| 257 | 1.1.2.5.1.2 | RTM |  | 1d | 2007-01-24 | 2007-01-24 | 256, 220 | 2007-01-24 | 2007-01-24 | 1d | 175d |  | John | 8h |

| ID | WBS | Task | Type | Duration | Start | Finish | Predecessors | Baseline start | Baseline finish | Baseline duration | Total slack | Free slack | Constraint | Resources | Work |
| --- | --- | --- | --- | --- | --- | --- | --- | --- | --- | --- | --- | --- | --- | --- | --- |
| 258 | 1.1.2.5.2 | **Final Tests of Iteration** |  | 2d | 2007-01-24 | 2007-01-26 |  | 2007-01-24 | 2007-01-26 | 2d | 173d |  |  |  | 64h |
| 259 | 1.1.2.5.2.1 | Deploy Prototype for Iteration 2 (Task 2.5) | milestone | 0d | 2007-01-24 | 2007-01-24 | 241 | 2007-01-24 | 2007-01-24 | 0d | 173d | 0d |  | Vinay; Joshua; Rhett |  |
| 260 | 1.1.2.5.2.2 | Validation and Acceptance Testing |  | 2d | 2007-01-25 | 2007-01-26 | 259 | 2007-01-25 | 2007-01-26 | 2d | 173d | 0d |  | Renee; David; Brenda; Natasha | 64h |
| 261 | 1.1.2.5.2.3 | Submit Test Results Report (Task 2.7) | milestone | 0d | 2007-01-26 | 2007-01-26 | 260 | 2007-01-26 | 2007-01-26 | 0d | 173d |  |  |  |  |
| 262 | 1.2 | **Construction Phase** |  | 160d | 2007-02-01 | 2007-09-12 |  | 2007-02-01 | 2007-09-12 | 160d | 0d |  |  |  |  |
| 263 | 1.2.1 | **Construction Phase Iteration 1** |  | 22d | 2007-02-01 | 2007-03-02 |  | 2007-02-01 | 2007-03-02 | 22d | 0d |  | start no earlier than 2007-02-01 |  |  |
| 264 | 1.2.1.1 | Begin Iteration 1 | milestone | 0d | 2007-02-01 | 2007-02-01 |  | 2007-02-01 | 2007-02-01 | 0d | 0d |  |  |  |  |
| 265 | 1.2.1.2 | Environment Updates |  | 15d | 2007-02-01 | 2007-02-21 |  | 2007-02-01 | 2007-02-21 | 15d | 155d |  |  |  |  |
| 266 | 1.2.1.3 | Updates to Requirements, Use Case, UML, and Design Document |  | 20d | 2007-02-01 | 2007-02-28 |  | 2007-02-01 | 2007-02-28 | 20d | 150d |  |  |  |  |
| 267 | 1.2.1.4 | Test Plan and RTM Updates |  | 15d | 2007-02-01 | 2007-02-21 |  | 2007-02-01 | 2007-02-21 | 15d | 150d | 0d |  |  |  |
| 268 | 1.2.1.5 | Develop Code |  | 20d | 2007-02-01 | 2007-02-28 |  | 2007-02-01 | 2007-02-28 | 20d | 150d |  |  |  |  |
| 269 | 1.2.1.6 | Testing |  | 20d | 2007-02-01 | 2007-02-28 |  | 2007-02-01 | 2007-02-28 | 20d | 150d |  |  |  |  |
| 270 | 1.2.1.7 | Installation Guide Draft |  | 5d | 2007-02-22 | 2007-02-28 | 272FS-5d | 2007-02-22 | 2007-02-28 | 5d | 150d |  |  |  |  |
| 271 | 1.2.1.8 | Testing Results |  | 5d | 2007-02-22 | 2007-02-28 | 267 | 2007-02-22 | 2007-02-28 | 5d | 150d |  |  |  |  |
| 272 | 1.2.1.9 | Finish Iteration 1 | milestone | 0d | 2007-02-28 | 2007-02-28 | 264FS+20d | 2007-02-28 | 2007-02-28 | 0d | 0d |  |  |  |  |
| 273 | 1.2.1.10 | Iteration 1 Review and Feedback |  | 5d | 2007-02-26 | 2007-03-02 | 272FS-3d | 2007-02-26 | 2007-03-02 | 5d | 0d |  |  |  |  |
| 274 | 1.2.2 | **Construction Phase Iteration 2** |  | 23d | 2007-03-02 | 2007-04-04 | 273 | 2007-03-02 | 2007-04-04 | 23d | 0d |  |  |  |  |
| 275 | 1.2.2.1 | Begin Iteration 2 | milestone | 0d | 2007-03-02 | 2007-03-02 |  | 2007-03-02 | 2007-03-02 | 0d | 0d |  |  |  |  |
| 276 | 1.2.2.2 | Environment Updates |  | 10d | 2007-03-05 | 2007-03-16 |  | 2007-03-05 | 2007-03-16 | 10d | 138d |  |  |  |  |
| 277 | 1.2.2.3 | Updates to Requirements, Use Case, UML, and Design Document |  | 20d | 2007-03-05 | 2007-03-30 |  | 2007-03-05 | 2007-03-30 | 20d | 128d |  |  |  |  |
| 278 | 1.2.2.4 | Test Plan and RTM Updates |  | 15d | 2007-03-05 | 2007-03-23 |  | 2007-03-05 | 2007-03-23 | 15d | 133d |  |  |  |  |
| 279 | 1.2.2.5 | Develop Code |  | 20d | 2007-03-05 | 2007-03-30 |  | 2007-03-05 | 2007-03-30 | 20d | 128d |  |  |  |  |
| 280 | 1.2.2.6 | Testing |  | 20d | 2007-03-05 | 2007-03-30 |  | 2007-03-05 | 2007-03-30 | 20d | 128d | 0d |  |  |  |
| 281 | 1.2.2.7 | Testing Results |  | 5d | 2007-03-26 | 2007-03-30 | 280FS-5d | 2007-03-26 | 2007-03-30 | 5d | 128d |  |  |  |  |
| 282 | 1.2.2.8 | Installation Guide Drafts |  | 5d | 2007-03-26 | 2007-03-30 | 283FS-5d | 2007-03-26 | 2007-03-30 | 5d | 128d |  |  |  |  |
| 283 | 1.2.2.9 | Finish Iteration 2 | milestone | 0d | 2007-03-30 | 2007-03-30 | 275FS+20d | 2007-03-30 | 2007-03-30 | 0d | 0d |  |  |  |  |
| 284 | 1.2.2.10 | Iteration 2 Review and Feedback |  | 5d | 2007-03-29 | 2007-04-04 | 283FS-2d | 2007-03-29 | 2007-04-04 | 5d | 0d |  |  |  |  |

| ID | WBS | Task | Type | Duration | Start | Finish | Predecessors | Baseline start | Baseline finish | Baseline duration | Total slack |
| --- | --- | --- | --- | --- | --- | --- | --- | --- | --- | --- | --- |
| 285 | 1.2.3 | **Construction Phase Iteration 3** |  | 23d | 2007-04-04 | 2007-05-07 | 284 | 2007-04-04 | 2007-05-07 | 23d | 0d |
| 286 | 1.2.3.1 | Begin Iteration 3 | milestone | 0d | 2007-04-04 | 2007-04-04 |  | 2007-04-04 | 2007-04-04 | 0d | 0d |
| 287 | 1.2.3.2 | Environment Updates |  | 10d | 2007-04-05 | 2007-04-18 |  | 2007-04-05 | 2007-04-18 | 10d | 115d |
| 288 | 1.2.3.3 | Updates to Requirements, Use Case, UML, and Design Document |  | 20d | 2007-04-05 | 2007-05-02 |  | 2007-04-05 | 2007-05-02 | 20d | 105d |
| 289 | 1.2.3.4 | Test Plan and RTM Updates |  | 15d | 2007-04-05 | 2007-04-25 |  | 2007-04-05 | 2007-04-25 | 15d | 110d |
| 290 | 1.2.3.5 | Develop Code |  | 20d | 2007-04-05 | 2007-05-02 |  | 2007-04-05 | 2007-05-02 | 20d | 105d |
| 291 | 1.2.3.6 | Testing |  | 20d | 2007-04-05 | 2007-05-02 |  | 2007-04-05 | 2007-05-02 | 20d | 105d |
| 292 | 1.2.3.7 | Installation Guide Drafts |  | 5d | 2007-04-26 | 2007-05-02 | 293FS-5d | 2007-04-26 | 2007-05-02 | 5d | 105d |
| 293 | 1.2.3.8 | Finish Iteration 3 | milestone | 0d | 2007-05-02 | 2007-05-02 | 286FS+20d | 2007-05-02 | 2007-05-02 | 0d | 0d |
| 294 | 1.2.3.9 | Iteration 3 Review and Feedback |  | 5d | 2007-05-01 | 2007-05-07 | 293FS-2d | 2007-05-01 | 2007-05-07 | 5d | 0d |
| 295 | 1.2.4 | **Construction Phase Iteration 4** |  | 23d | 2007-05-07 | 2007-06-07 | 294 | 2007-05-07 | 2007-06-07 | 23d | 0d |
| 296 | 1.2.4.1 | Begin Iteration 4 | milestone | 0d | 2007-05-07 | 2007-05-07 |  | 2007-05-07 | 2007-05-07 | 0d | 0d |
| 297 | 1.2.4.2 | Environment Updates |  | 10d | 2007-05-08 | 2007-05-21 |  | 2007-05-08 | 2007-05-21 | 10d | 92d |
| 298 | 1.2.4.3 | Updates to Requirements, Use Case, UML, and Design Document |  | 20d | 2007-05-08 | 2007-06-04 |  | 2007-05-08 | 2007-06-04 | 20d | 82d |
| 299 | 1.2.4.4 | Test Plan and RTM Updates |  | 15d | 2007-05-08 | 2007-05-28 |  | 2007-05-08 | 2007-05-28 | 15d | 87d |
| 300 | 1.2.4.5 | Develop Code |  | 20d | 2007-05-08 | 2007-06-04 |  | 2007-05-08 | 2007-06-04 | 20d | 82d |
| 301 | 1.2.4.6 | Testing |  | 20d | 2007-05-08 | 2007-06-04 |  | 2007-05-08 | 2007-06-04 | 20d | 82d |
| 302 | 1.2.4.7 | Installation Guide Draft |  | 5d | 2007-05-29 | 2007-06-04 | 305FS-5d | 2007-05-29 | 2007-06-04 | 5d | 82d |
| 303 | 1.2.4.8 | Administrators Guide Draft |  | 5d | 2007-05-29 | 2007-06-04 | 305FS-5d | 2007-05-29 | 2007-06-04 | 5d | 82d |
| 304 | 1.2.4.9 | End User Guide Draft |  | 5d | 2007-05-29 | 2007-06-04 | 305FS-5d | 2007-05-29 | 2007-06-04 | 5d | 82d |
| 305 | 1.2.4.10 | Finish Iteration 4 | milestone | 0d | 2007-06-04 | 2007-06-04 | 296FS+20d | 2007-06-04 | 2007-06-04 | 0d | 0d |
| 306 | 1.2.4.11 | Iteration 4 Review and Feedback |  | 5d | 2007-06-01 | 2007-06-07 | 305FS-2d | 2007-06-01 | 2007-06-07 | 5d | 0d |
| 307 | 1.2.5 | **Construction Phase Iteration 5** |  | 23d | 2007-06-07 | 2007-07-10 | 306 | 2007-06-07 | 2007-07-10 | 23d | 0d |
| 308 | 1.2.5.1 | Begin Iteration 5 | milestone | 0d | 2007-06-07 | 2007-06-07 |  | 2007-06-07 | 2007-06-07 | 0d | 0d |
| 309 | 1.2.5.2 | Environment Updates |  | 10d | 2007-06-08 | 2007-06-21 |  | 2007-06-08 | 2007-06-21 | 10d | 69d |
| 310 | 1.2.5.3 | Updates to Requirements, Use Case, UML, and Design Document |  | 20d | 2007-06-08 | 2007-07-05 |  | 2007-06-08 | 2007-07-05 | 20d | 59d |
| 311 | 1.2.5.4 | Test Plan and RTM Updates |  | 15d | 2007-06-08 | 2007-06-28 |  | 2007-06-08 | 2007-06-28 | 15d | 64d |
| 312 | 1.2.5.5 | Develop Code |  | 20d | 2007-06-08 | 2007-07-05 |  | 2007-06-08 | 2007-07-05 | 20d | 59d |
| 313 | 1.2.5.6 | Testing |  | 20d | 2007-06-08 | 2007-07-05 |  | 2007-06-08 | 2007-07-05 | 20d | 59d |
| 314 | 1.2.5.7 | Testing Results |  | 5d | 2007-06-29 | 2007-07-05 | 318FS-5d | 2007-06-29 | 2007-07-05 | 5d | 59d |
| 315 | 1.2.5.8 | Installation Guide Draft |  | 5d | 2007-06-29 | 2007-07-05 | 318FS-5d | 2007-06-29 | 2007-07-05 | 5d | 59d |
| 316 | 1.2.5.9 | Administrators Guide Draft |  | 5d | 2007-06-29 | 2007-07-05 | 318FS-5d | 2007-06-29 | 2007-07-05 | 5d | 59d |
| 317 | 1.2.5.10 | End User Guide Draft |  | 5d | 2007-06-08 | 2007-06-14 |  | 2007-06-08 | 2007-06-14 | 5d | 74d |
| 318 | 1.2.5.11 | Finish Iteration 5 | milestone | 0d | 2007-07-05 | 2007-07-05 | 308FS+20d | 2007-07-05 | 2007-07-05 | 0d | 0d |
| 319 | 1.2.5.12 | Iteration 5 Review and Feedback |  | 5d | 2007-07-04 | 2007-07-10 | 318FS-2d | 2007-07-04 | 2007-07-10 | 5d | 0d |

| ID | WBS | Task | Type | Duration | Start | Finish | Predecessors | Baseline start | Baseline finish | Baseline duration | Total slack | Free slack |
| --- | --- | --- | --- | --- | --- | --- | --- | --- | --- | --- | --- | --- |
| 320 | 1.2.6 | **Construction Phase Iteration 6** |  | 23d | 2007-07-10 | 2007-08-10 | 319 | 2007-07-10 | 2007-08-10 | 23d | 0d |  |
| 321 | 1.2.6.1 | Begin Iteration 6 | milestone | 0d | 2007-07-10 | 2007-07-10 |  | 2007-07-10 | 2007-07-10 | 0d | 0d |  |
| 322 | 1.2.6.2 | Environment Updates |  | 10d | 2007-07-11 | 2007-07-24 |  | 2007-07-11 | 2007-07-24 | 10d | 46d |  |
| 323 | 1.2.6.3 | Updates to Requirements, Use Case, UML, and Design Document |  | 20d | 2007-07-11 | 2007-08-07 |  | 2007-07-11 | 2007-08-07 | 20d | 36d |  |
| 324 | 1.2.6.4 | Test Plan and RTM Updates |  | 15d | 2007-07-11 | 2007-07-31 |  | 2007-07-11 | 2007-07-31 | 15d | 41d |  |
| 325 | 1.2.6.5 | Develop Code |  | 20d | 2007-07-11 | 2007-08-07 |  | 2007-07-11 | 2007-08-07 | 20d | 36d |  |
| 326 | 1.2.6.6 | Installation Guide Draft |  | 5d | 2007-08-01 | 2007-08-07 | 331FS-5d | 2007-08-01 | 2007-08-07 | 5d | 36d |  |
| 327 | 1.2.6.7 | Administrators Guide Draft |  | 5d | 2007-08-01 | 2007-08-07 | 331FS-5d | 2007-08-01 | 2007-08-07 | 5d | 36d |  |
| 328 | 1.2.6.8 | End User Guide Draft |  | 5d | 2007-08-01 | 2007-08-07 | 331FS-5d | 2007-08-01 | 2007-08-07 | 5d | 36d |  |
| 329 | 1.2.6.9 | Testing |  | 20d | 2007-07-11 | 2007-08-07 |  | 2007-07-11 | 2007-08-07 | 20d | 36d | 0d |
| 330 | 1.2.6.10 | Testing Results |  | 5d | 2007-08-01 | 2007-08-07 | 329FS-5d | 2007-08-01 | 2007-08-07 | 5d | 36d |  |
| 331 | 1.2.6.11 | Finish Iteration 6 | milestone | 0d | 2007-08-07 | 2007-08-07 | 321FS+20d | 2007-08-07 | 2007-08-07 | 0d | 0d |  |
| 332 | 1.2.6.12 | Iteration 6 Review and Feedback |  | 5d | 2007-08-06 | 2007-08-10 | 331FS-2d | 2007-08-06 | 2007-08-10 | 5d | 0d |  |
| 333 | 1.2.7 | **Construction Phase Iteration 7** |  | 23d | 2007-08-10 | 2007-09-12 | 332 | 2007-08-10 | 2007-09-12 | 23d | 0d |  |
| 334 | 1.2.7.1 | Begin Iteration 7 | milestone | 0d | 2007-08-10 | 2007-08-10 |  | 2007-08-10 | 2007-08-10 | 0d | 0d |  |
| 335 | 1.2.7.2 | Environment Updates |  | 10d | 2007-08-13 | 2007-08-24 |  | 2007-08-13 | 2007-08-24 | 10d | 23d |  |
| 336 | 1.2.7.3 | Finalize Requirements, Use Case, UML, and Design Document |  | 10d | 2007-08-13 | 2007-08-24 |  | 2007-08-13 | 2007-08-24 | 10d | 13d | 0d |
| 337 | 1.2.7.4 | Test Plan and RTM Updates (Task 3.6) |  | 15d | 2007-08-13 | 2007-08-31 |  | 2007-08-13 | 2007-08-31 | 15d | 18d |  |
| 338 | 1.2.7.5 | Finalize Code Base (Task 3.5) |  | 20d | 2007-08-13 | 2007-09-07 |  | 2007-08-13 | 2007-09-07 | 20d | 13d |  |
| 339 | 1.2.7.6 | Testing |  | 20d | 2007-08-13 | 2007-09-07 |  | 2007-08-13 | 2007-09-07 | 20d | 13d |  |
| 340 | 1.2.7.7 | Final Test Results Report (3.8) |  | 5d | 2007-09-03 | 2007-09-07 | 348FS-5d | 2007-09-03 | 2007-09-07 | 5d | 13d |  |
| 341 | 1.2.7.8 | Final Transition Phase Plan (3.16) |  | 5d | 2007-09-03 | 2007-09-07 | 348FS-5d | 2007-09-03 | 2007-09-07 | 5d | 13d |  |
| 342 | 1.2.7.9 | Compatibility Review Submission Package (Task 3.12) |  | 10d | 2007-08-27 | 2007-09-07 | 348FS-10d | 2007-08-27 | 2007-09-07 | 10d | 13d |  |
| 343 | 1.2.7.10 | Generation of CDEs (Task 3.11.2) |  | 10d | 2007-08-27 | 2007-09-07 | 336 | 2007-08-27 | 2007-09-07 | 10d | 13d |  |
| 344 | 1.2.7.11 | Final Administrators Guide (Task 3.13) |  | 5d | 2007-09-03 | 2007-09-07 | 348FS-5d | 2007-09-03 | 2007-09-07 | 5d | 13d |  |
| 345 | 1.2.7.12 | Final End Users Guide (Task 3.15.2) |  | 5d | 2007-09-03 | 2007-09-07 | 348FS-5d | 2007-09-03 | 2007-09-07 | 5d | 13d |  |
| 346 | 1.2.7.13 | Final Installation Guide (Task 3.10) |  | 5d | 2007-09-03 | 2007-09-07 | 348FS-5d | 2007-09-03 | 2007-09-07 | 5d | 13d |  |
| 347 | 1.2.7.14 | Release Notes (Task 3.14) |  | 5d | 2007-09-03 | 2007-09-07 | 348FS-5d | 2007-09-03 | 2007-09-07 | 5d | 13d |  |
| 348 | 1.2.7.15 | Finish Iteration 7 | milestone | 0d | 2007-09-07 | 2007-09-07 | 334FS+20d | 2007-09-07 | 2007-09-07 | 0d | 0d |  |
| 349 | 1.2.7.16 | Iteration 7 Review and Feedback |  | 5d | 2007-09-06 | 2007-09-12 | 348FS-2d | 2007-09-06 | 2007-09-12 | 5d | 0d |  |
| 350 | 1.2.8 | Transition Phase Go/No-Go Gate | milestone | 0d | 2007-09-12 | 2007-09-12 | 349 | 2007-09-12 | 2007-09-12 | 0d | 0d |  |

| ID | WBS | Task | Duration | Start | Finish | Predecessors | Baseline start | Baseline finish | Baseline duration | Total slack | Free slack |
| --- | --- | --- | --- | --- | --- | --- | --- | --- | --- | --- | --- |
| 351 | 1.3 | **Transition Phase** | 10d | 2007-09-13 | 2007-09-26 | 350 | 2007-09-13 | 2007-09-26 | 10d | 0d |  |
| 352 | 1.3.1 | Deployment Plan (Task 4.1) | 2d | 2007-09-13 | 2007-09-14 |  | 2007-09-13 | 2007-09-14 | 2d | 3d | 0d |
| 353 | 1.3.2 | Deployment | 5d | 2007-09-17 | 2007-09-21 | 352 | 2007-09-17 | 2007-09-21 | 5d | 3d |  |
| 354 | 1.3.3 | Deployment Report (Task 4.2) | 1d | 2007-09-13 | 2007-09-13 |  | 2007-09-13 | 2007-09-13 | 1d | 9d |  |
| 355 | 1.3.4 | Code Release Updates (if needed) (Task 4.3) | 10d | 2007-09-13 | 2007-09-26 |  | 2007-09-13 | 2007-09-26 | 10d | 0d |  |
| 356 | 1.3.5 | Guide Updates (if needed) | 10d | 2007-09-13 | 2007-09-26 |  | 2007-09-13 | 2007-09-26 | 10d | 0d |  |
| 357 | 1.3.6 | **Project Closing Activities** | 10d | 2007-09-13 | 2007-09-26 |  | 2007-09-13 | 2007-09-26 | 10d | 0d |  |
| 358 | 1.3.6.1 | Lessons Learned (Task 1.6) | 10d | 2007-09-13 | 2007-09-26 |  | 2007-09-13 | 2007-09-26 | 10d | 0d |  |
| 359 | 1.3.6.2 | Archiving | 10d | 2007-09-13 | 2007-09-26 |  | 2007-09-13 | 2007-09-26 | 10d | 0d |  |
| 360 | 1.3.6.3 | Contract Closeout | 10d | 2007-09-13 | 2007-09-26 |  | 2007-09-13 | 2007-09-26 | 10d | 0d |  |
